How a schedule from OmniPlan changed from version to version. A marks actual dates.

## Version 1 (saved 2016-01-27)

Note of the change: （+）【开发计划】上传

| ID | WBS | Task |
| --- | --- | --- |
| 1 | 1 | **UIUX Framework** |
| 2 |  | TabBarController |
| 3 |  | NavigationController |
| 4 | 2 | **直播广场** |
| 5 |  | 直播广场（主界面） |
| 6 |  | 好友直播 |
| 7 |  | 热门直播 |
| 8 | 2.4 | **最新直播** |
| 9 |  | 最新直播（主界面） |
| 10 |  | 达人推荐 |
| 11 | 3 | **我的主页** |
| 12 |  | 我的主页（主界面） |
| 13 |  | 我的直播 |
| 14 |  | 我的关注 |
| 15 |  | 我的粉丝 |
| 16 | 3.5 | **私信** |
| 17 |  | 私信（主界面） |
| 18 |  | 未关注人消息 |
| 19 | 3.6 | **编辑资料** |
| 20 |  | 编辑资料（主界面） |
| 21 |  | 选择头像 |
| 22 |  | 编辑昵称 |
| 23 |  | 选择性别 |
| 24 |  | 编辑个性签名 |
| 25 | 3.7 | **我的收益** |
| 26 |  | 我的收益（主界面） |
| 27 |  | 兑换界面 |
| 28 |  | 微信提现 |
| 29 |  | 提现记录 |
| 30 |  | 我的等级 |
| 31 |  | 我的钻石 |
| 32 | 3.10 | **设置** |
| 33 |  | 设置（主界面） |
| 34 |  | 黑名单 |
| 35 |  | 推送管理 |
| 36 |  | 关于映客 |
| 37 |  | 用户反馈 |
| 38 | 4 | **TA的主页** |
| 39 |  | TA的主页（主界面） |
| 40 |  | TA的直播 |
| 41 |  | TA的关注 |
| 42 |  | TA的粉丝 |
| 43 | 5 | **视频直播** |
| 44 |  | 视频层 |
| 45 | 5.2 | **信息层** |
| 46 |  | 观众列表 |
| 47 |  | 观众信息 |
| 48 |  | 消息流 |
| 49 |  | 弹幕流 |
| 50 |  | 礼物流 |
| 51 |  | 消息发送 |
| 52 |  | 礼物发送 |
| 53 |  | 社交分享 |
| 54 | 6 | **视频录制** |
| 55 |  | 直播信息 |
| 56 |  | 视频录制 |
| 57 | 7 | **登录** |
| 58 |  | 登录（主界面） |
| 59 |  | 好友推荐 |
| 60 | 8 | **公共界面** |
| 61 |  | 聊天界面 |
| 62 |  | 搜索界面 |
| 63 |  | 映票贡献榜 |
| 64 |  | 网页浏览 |

## Version 2 (saved 2016-01-27)

Note of the change: （+）【开发计划】保存

Added:

| ID | Task | Predecessors | Resources |
| --- | --- | --- | --- |
| 1 | **直播秀_iOS_V0.1.0_开发计划** |  |  |
| 33 | 更改头像 | 32 | 李世杰 |

Removed: 57 登录; 58 登录（主界面）; 59 好友推荐

Changed:

| ID | Task | Predecessors | Other |
| --- | --- | --- | --- |
| 3 | TabBarController |  | resources none → 黄玉辉 |
| 4 | NavigationController | none → 3 | resources none → 黄玉辉 |
| 5 | **直播广场** | none → 2 |  |
| 6 | 直播广场（主界面） |  | resources none → 黄玉辉 |
| 7 | 好友直播 | none → 6 | resources none → 黄玉辉 |
| 8 | 热门直播 | none → 7 | resources none → 黄玉辉 |
| 9 | **最新直播** | none → 8 |  |
| 10 | 最新直播（主界面） |  | resources none → 黄玉辉 |
| 11 | 达人推荐 | none → 10 | resources none → 黄玉辉 |
| 13 | 我的主页（主界面） |  | constraint none → start no earlier than 2016-02-01; resources none → 李世杰 |
| 14 | 我的直播 | none → 13 | resources none → 李世杰 |
| 15 | 我的关注 | none → 14 | resources none → 李世杰 |
| 16 | 我的粉丝 | none → 15 | resources none → 李世杰 |
| 17 | **私信** | none → 16 |  |
| 18 | 私信（主界面） |  | resources none → 李世杰 |
| 19 | 未关注人消息 | none → 18 | resources none → 李世杰 |
| 20 | **编辑资料** | none → 17 |  |
| 21 | 编辑资料（主界面） |  | resources none → 李世杰 |
| 22 | 选择头像 | none → 21 | resources none → 李世杰 |
| 23 | 编辑昵称 | none → 22 | resources none → 李世杰 |
| 24 | 选择性别 | none → 23 | resources none → 李世杰 |
| 25 | 编辑个性签名 | none → 24 | resources none → 李世杰 |
| 26 | **我的收益** | none → 20 |  |
| 27 | 我的收益（主界面） |  | resources none → 李世杰 |
| 28 | 兑换界面 | none → 27 | resources none → 李世杰 |
| 29 | 微信提现 | none → 28 | resources none → 李世杰 |
| 30 | 提现记录 | none → 29 | resources none → 李世杰 |
| 31 | 我的等级 | none → 26 | resources none → 李世杰 |
| 32 | 我的钻石 | none → 31 | resources none → 李世杰 |
| 34 | **设置** | none → 33 |  |
| 35 | 设置（主界面） |  | resources none → 李世杰 |
| 36 | 黑名单 | none → 35 | resources none → 李世杰 |
| 37 | 推送管理 | none → 36 | resources none → 李世杰 |
| 38 | 关于映客 | none → 37 | resources none → 李世杰 |
| 39 | 用户反馈 | none → 38 | resources none → 李世杰 |
| 40 | **TA的主页** | none → 12 |  |
| 41 | TA的主页（主界面） |  | resources none → 李世杰 |
| 42 | TA的直播 | none → 41 | resources none → 李世杰 |
| 43 | TA的关注 | none → 42 | resources none → 李世杰 |
| 44 | TA的粉丝 | none → 43 | resources none → 李世杰 |
| 46 | 视频层 |  | constraint none → start no earlier than 2016-02-14; resources none → 陈番顺 |
| 47 | **信息层** | none → 9 |  |
| 48 | 观众列表 |  | resources none → 黄玉辉 |
| 49 | 观众信息 | none → 48 | resources none → 黄玉辉 |
| 50 | 消息流 | none → 49 | resources none → 黄玉辉 |
| 51 | 弹幕流 | none → 50 | resources none → 黄玉辉 |
| 52 | 礼物流 | none → 51 | resources none → 黄玉辉 |
| 53 | 消息发送 | none → 52 | resources none → 黄玉辉 |
| 54 | 礼物发送 | none → 53 | resources none → 黄玉辉 |
| 55 | 社交分享 | none → 54 | resources none → 黄玉辉 |
| 56 | **视频录制** | none → 46 |  |
| 57 | 直播信息 |  | resources none → 陈番顺 |
| 58 | 视频录制 | none → 57 | resources none → 陈番顺 |
| 59 | **公共界面** | none → 40 |  |
| 60 | 网页浏览 |  | resources none → 李世杰 |
| 61 | 搜索界面 | none → 60 | resources none → 李世杰 |
| 62 | 映票贡献榜 | none → 61 | resources none → 李世杰 |
| 63 | 聊天界面 | none → 62 | resources none → 李世杰 |

## Version 3 (saved 2016-01-28)

Note of the change: （+）【开发计划】更新进度

Complete tasks 0 → 1.

Changed:

| ID | Task | Complete |
| --- | --- | --- |
| 3 | TabBarController | 0% → 100% |

## Version 4 (saved 2016-02-01)

Note of the change: （*）【开发计划】更新进度

Complete tasks 1 → 4.

Added:

| ID | Task | Predecessors | Resources |
| --- | --- | --- | --- |
| 15 | 我的直播 | 13 | 李世杰 |

Changed:

| ID | Task | Complete | Other |
| --- | --- | --- | --- |
| 4 | NavigationController | 0% → 100% |  |
| 6 | 直播广场（主界面） | 0% → 100% |  |
| 13 | 我的主页（主界面） | 0% → 100% |  |
| 47 | 视频层 |  | constraint start no earlier than 2016-02-14 → start no earlier than 2016-02-01 |

## Version 5 (saved 2016-02-02)

Note of the change: （*）【开发计划】更新进度

Complete tasks 4 → 7.

Removed: 15 我的直播

Changed:

| ID | Task | Complete |
| --- | --- | --- |
| 7 | 好友直播 | 0% → 100% |
| 8 | 热门直播 | 0% → 100% |
| 14 | 我的直播 | 0% → 100% |

## Version 6 (saved 2016-02-04)

Note of the change: （*）【开发计划】更新进度

Complete tasks 7 → 14.

Changed:

| ID | Task | Complete | Other |
| --- | --- | --- | --- |
| 10 | 最新直播（主界面） | 0% → 100% | constraint none → start no earlier than 2016-02-04 |
| 11 | 达人推荐 | 0% → 100% |  |
| 15 | 我的关注 | 0% → 100% |  |
| 16 | 我的粉丝 | 0% → 100% |  |
| 18 | 私信（主界面） | 0% → 100% |  |
| 19 | 未关注人消息 | 0% → 100% |  |
| 21 | 编辑资料（主界面） | 0% → 100% |  |

## Version 7 (saved 2016-02-06)

Note of the change: （*）【开发计划】更新进度

Complete tasks 14 → 20.

Changed:

| ID | Task | Complete |
| --- | --- | --- |
| 22 | 选择头像 | 0% → 100% |
| 23 | 编辑昵称 | 0% → 100% |
| 24 | 选择性别 | 0% → 100% |
| 25 | 编辑个性签名 | 0% → 100% |
| 27 | 我的收益（主界面） | 0% → 100% |
| 48 | 观众列表 | 0% → 100% |

## Version 8 (saved 2016-02-08)

Note of the change: （*）【开发计划】更新进度

Complete tasks 20 → 21.

Changed:

| ID | Task | Complete | Other |
| --- | --- | --- | --- |
| 49 | 观众小主页 |  | was named 观众信息 |
| 50 | 消息墙 | 0% → 100% | was named 消息流 |

## Version 9 (saved 2016-02-14)

Note of the change: （*）【开发计划】调整开发时间（李世杰）

Complete tasks 21 → 25.

Changed:

| ID | Task | Complete | Predecessors | Other |
| --- | --- | --- | --- | --- |
| 28 | 兑换界面 | 0% → 100% |  |  |
| 29 | 微信提现 | 0% → 100% |  |  |
| 30 | 提现记录 | 0% → 100% |  |  |
| 32 | 我的钻石 |  | 31 → none | constraint none → start no earlier than 2016-02-15 |
| 46 | 视频层 |  |  | constraint start no earlier than 2016-02-01 → start no earlier than 2016-02-15 |
| 49 | 观众小主页 | 0% → 100% |  |  |
| 51 | 礼物发送 |  | 53 → none | constraint none → start no earlier than 2016-02-15 |
| 52 | 礼物流 |  | 54 → 51 |  |
| 54 | 弹幕流 |  | 50 → 50, 53 |  |
| 55 | 社交分享 |  | 51 → 54 |  |
